# EAP v2

Schedule from MS Project, 2023-05-09 to 2025-05-05, A marks actual dates.

## Calendars

- Standard: Mon-Fri 09:00-12:00, 13:00-18:00; Sat-Sun off. Exceptions (off unless hours are given): 2024-12-23 to 2025-01-03 (Férias coletivas).

## Resources

| Resource |
| --- |
| Engenharia |
| Produção |
| Logistica |
| Gestão de projetos |
| CQ |
| Comercial |
| Desenvolvimento |
| JM |
| Sonoco |
| Ferramentaria |
| Compras |
| Haitian |
| Man. de maq. |
| G3 |
| Controladoria |
| Sepro |
| GP |
| 115 |
| 116 |
| Automação |
| Gestão Integrada |
| 98 |
| 35 |
| Escritório de Projetos |

## Schedule

| ID | WBS | Task | Type | Duration | Start | Finish | Predecessors | Complete | Remaining | Total slack | Free slack | Constraint | Resources | Work | Actual work |
| --- | --- | --- | --- | --- | --- | --- | --- | --- | --- | --- | --- | --- | --- | --- | --- |
| 1 | 1 | **402** |  | 510d | 2023-05-09 A | 2025-05-05 |  | 93% | 33.59d | 0d |  |  |  | 11088h | 10352h |
| 2 | 1.1 | **Operacional** |  | 510d | 2023-05-09 A | 2025-05-05 |  | 93% | 33.59d | 0d |  |  |  | 11088h | 10352h |
| 3 | 1.1.1 | **Molde** |  | 477d | 2023-05-09 A | 2025-03-19 |  | 98% | 8.49d | 33d |  |  |  | 2248h | 2208h |
| 4 | 1.1.1.1 | **J Mold** |  | 475d | 2023-05-09 A | 2025-03-17 |  | 99% | 0d | 35d |  |  |  | 2168h | 2168h |
| 5 | 1.1.1.1.1 | **Molde Piloto** |  | 7d | 2023-05-18 A | 2023-05-26 A |  | 100% |  |  |  |  |  | 96h | 96h |
| 6 | 1.1.1.1.1.1 | Tryout |  | 2d | 2023-05-18 A | 2023-05-19 A |  | 100% |  |  |  | start no earlier than 2023-05-18 | JM | 16h | 16h |
| 7 | 1.1.1.1.1.2 | Analise de ciclo |  | 5d | 2023-05-22 A | 2023-05-26 A | 6 | 100% |  |  |  |  | Engenharia | 40h | 40h |
| 8 | 1.1.1.1.1.3 | Peças com contração |  | 5d | 2023-05-22 A | 2023-05-26 A | 6 | 100% |  |  |  |  | JM | 40h | 40h |
| 9 | 1.1.1.1.2 | **Molde 679** |  | 464d | 2023-05-09 A | 2025-02-28 |  | 99% | 0d | 43d |  |  |  | 1864h | 1864h |
| 10 | 1.1.1.1.2.1 | **Construcao** |  | 80d | 2023-05-09 A | 2023-08-28 A |  | 100% |  |  |  |  |  | 720h | 720h |
| 11 | 1.1.1.1.2.1.1 | Projeto |  | 22d | 2023-05-09 A | 2023-06-07 A |  | 100% |  |  |  | start no earlier than 2023-05-09 | JM | 176h | 176h |
| 12 | 1.1.1.1.2.1.2 | Compra de material |  | 10d | 2023-05-25 A | 2023-06-07 A | 11FF | 100% |  |  |  |  | JM | 80h | 80h |
| 13 | 1.1.1.1.2.1.3 | Usinagem |  | 35d | 2023-06-08 A | 2023-07-26 A | 12 | 100% |  |  |  |  | JM | 280h | 280h |
| 14 | 1.1.1.1.2.1.4 | Montagem |  | 23d | 2023-07-27 A | 2023-08-28 A | 13 | 100% |  |  |  |  | JM | 184h | 184h |
| 15 | 1.1.1.1.2.2 | **Aprovacao** |  | 384d | 2023-08-29 A | 2025-02-28 A |  | 100% |  |  |  |  |  | 1144h | 1144h |
| 16 | 1.1.1.1.2.2.1 | 1º Try- Out |  | 9d | 2023-08-29 A | 2023-09-08 A | 14, 112, 113, 114 | 100% |  |  |  |  | JM | 72h | 72h |
| 17 | 1.1.1.1.2.2.2 | Ajuste ferramental |  | 5d | 2023-09-11 A | 2023-09-15 A | 16 | 100% |  |  |  |  | JM | 40h | 40h |
| 18 | 1.1.1.1.2.2.3 | 2º Try- Out |  | 5d | 2023-09-18 A | 2023-09-22 A | 17 | 100% |  |  |  | start no earlier than 2023-09-18 | JM | 40h | 40h |
| 19 | 1.1.1.1.2.2.4 | Dimensional |  | 5d | 2023-09-18 A | 2023-09-22 A | 18SS | 100% |  |  |  |  | CQ | 40h | 40h |
| 20 | 1.1.1.1.2.2.5 | Ajuste ferramental |  | 5d | 2023-09-25 A | 2023-09-29 A | 19 | 100% |  |  |  |  | JM | 40h | 40h |
| 21 | 1.1.1.1.2.2.6 | 3º Try- Out |  | 5d | 2023-10-02 A | 2023-10-06 A | 20 | 100% |  |  |  |  | JM | 40h | 40h |
| 22 | 1.1.1.1.2.2.7 | Analise de peça junto com cliente |  | 17d | 2023-10-09 A | 2023-10-31 A | 21 | 100% |  |  |  |  | Sonoco | 136h | 136h |
| 23 | 1.1.1.1.2.2.8 | Ajuste ferramental |  | 6d | 2023-11-01 A | 2023-11-08 A | 22 | 100% |  |  |  |  | JM | 48h | 48h |
| 24 | 1.1.1.1.2.2.9 | 4º Tryout |  | 2d | 2023-11-09 A | 2023-11-10 A | 23 | 100% |  |  |  |  | JM | 16h | 16h |
| 25 | 1.1.1.1.2.2.10 | Ajuste ferramental |  | 14d | 2023-11-13 A | 2023-11-30 A | 24 | 100% |  |  |  |  | JM | 112h | 112h |
| 26 | 1.1.1.1.2.2.11 | 5º Tryout |  | 3d | 2023-12-01 A | 2023-12-05 A | 25 | 100% |  |  |  |  | JM | 24h | 24h |
| 27 | 1.1.1.1.2.2.12 | Ajuste Ferramental |  | 12d | 2023-12-06 A | 2023-12-21 A | 26 | 100% |  |  |  |  | JM | 96h | 96h |
| 28 | 1.1.1.1.2.2.13 | 6º Tryout |  | 6d | 2023-12-28 A | 2024-01-04 A | 27FS+4d | 100% |  |  |  |  | JM | 48h | 48h |
| 29 | 1.1.1.1.2.2.14 | Ajuste Ferramental |  | 7d | 2024-01-05 A | 2024-01-15 A | 28 | 100% |  |  |  |  | JM | 56h | 56h |
| 30 | 1.1.1.1.2.2.15 | 7° Tryout |  | 2d | 2024-01-18 A | 2024-01-19 A | 29FS+2d | 100% |  |  |  |  | JM | 16h | 16h |
| 31 | 1.1.1.1.2.2.16 | Ajuste ferramental |  | 4d | 2024-01-22 A | 2024-01-25 A | 30 | 100% |  |  |  |  | JM | 32h | 32h |
| 32 | 1.1.1.1.2.2.17 | 8° Tryout |  | 4d | 2024-01-30 A | 2024-02-02 A | 31FS+2d | 100% |  |  |  |  | JM | 32h | 32h |
| 33 | 1.1.1.1.2.2.18 | 9° Tryout |  | 4d | 2025-01-27 A | 2025-01-30 A | 131, 146, 87 | 100% |  |  |  |  | JM | 32h | 32h |
| 34 | 1.1.1.1.2.2.19 | Dimensional |  | 2d | 2025-01-31 A | 2025-02-03 A | 33 | 100% |  |  |  |  | CQ | 16h | 16h |
| 35 | 1.1.1.1.2.2.20 | 10° Tryout |  | 2d | 2025-02-05 A | 2025-02-06 A | 34FS+1d | 100% |  |  |  |  | JM | 16h | 16h |
| 36 | 1.1.1.1.2.2.21 | Dimensional |  | 1d | 2025-02-07 A | 2025-02-07 A | 35 | 100% |  |  |  |  | CQ | 8h | 8h |
| 37 | 1.1.1.1.2.2.22 | Ajuste Ferramental |  | 7d | 2025-02-07 A | 2025-02-17 A | 35 | 100% |  |  |  |  | JM | 56h | 56h |
| 38 | 1.1.1.1.2.2.23 | Aguardando Master |  | 7d | 2025-02-10 A | 2025-02-18 A |  | 100% |  |  |  | start no earlier than 2025-02-10 | Desenvolvimento | 56h | 56h |
| 39 | 1.1.1.1.2.2.24 | 11° Tryout |  | 3d | 2025-02-19 A | 2025-02-21 A | 37, 38 | 100% |  |  |  |  | JM | 24h | 24h |
| 40 | 1.1.1.1.2.2.25 | Dimensional |  | 1d | 2025-02-24 A | 2025-02-24 A | 39 | 100% |  |  |  |  | CQ | 8h | 8h |
| 41 | 1.1.1.1.2.2.26 | Aguardando disponibilidade de máquina |  | 2d | 2025-02-24 A | 2025-02-25 A | 39 | 100% |  |  |  |  | Escritório de Projetos | 16h | 16h |
| 42 | 1.1.1.1.2.2.27 | 12° Tryout |  | 2d | 2025-02-26 A | 2025-02-27 A | 41 | 100% |  |  |  |  | JM | 16h | 16h |
| 43 | 1.1.1.1.2.2.28 | Dimensional |  | 1d | 2025-02-28 A | 2025-02-28 A | 42 | 100% |  |  |  |  | CQ | 8h | 8h |
| 44 | 1.1.1.1.2.3 | Aprovação JM | milestone | 0d | 2025-02-07 | 2025-02-07 | 36 |  |  | 32d | 0d |  | JM |  |  |
| 45 | 1.1.1.1.3 | Informar: vasao / controlador / gate |  | 16d | 2023-06-08 A | 2023-06-29 A | 12 | 100% |  |  |  | finish no earlier than 2023-06-16 | JM | 128h | 128h |
| 46 | 1.1.1.1.4 | Confecção de cabos p controlador |  | 10d | 2023-08-07 A | 2023-08-18 A | 45FS+26d | 100% |  |  |  | finish no earlier than 2023-07-31 | JM | 80h | 80h |
| 47 | 1.1.1.1.5 | Molde aprovado | milestone | 0d | 2025-03-17 | 2025-03-17 | 147 |  |  | 35d |  |  | Engenharia |  |  |

Notes:
- 39: Produzido na cor Azul

| ID | WBS | Task | Type | Duration | Start | Finish | Predecessors | Complete | Remaining | Total slack | Resources | Work | Actual work |
| --- | --- | --- | --- | --- | --- | --- | --- | --- | --- | --- | --- | --- | --- |
| 48 | 1.1.1.2 | **Ferramentaria** |  | 401d | 2023-08-23 A | 2025-03-19 |  | 50% | 200.5d | 33d |  | 80h | 40h |
| 49 | 1.1.1.2.1 | Engeman |  | 3d | 2023-08-23 A | 2023-08-25 A | 16SF | 100% |  |  | Ferramentaria | 24h | 24h |
| 50 | 1.1.1.2.2 | Cadastro de molde Logix |  | 1d | 2023-08-25 A | 2023-08-25 A | 16SF | 100% |  |  | Controladoria | 8h | 8h |
| 51 | 1.1.1.2.3 | Roteiro de injeção |  | 1d | 2023-08-28 A | 2023-08-28 A | 50 | 100% |  |  | Engenharia | 8h | 8h |
| 52 | 1.1.1.2.4 | Recebimento + liberação produção |  | 3d | 2025-02-10 | 2025-02-12 | 44 |  |  | 32d | Ferramentaria | 24h |  |
| 53 | 1.1.1.2.5 | Check de molde secundario |  | 2d | 2025-03-18 | 2025-03-19 | 147 |  |  | 33d | Ferramentaria | 16h |  |
| 54 | 1.1.2 | **Maquinario** |  | 144d | 2023-05-16 A | 2023-12-01 A |  | 100% |  |  |  | 1528h | 1528h |
| 55 | 1.1.2.1 | Analise de necessidade de comprar de perifericos |  | 3d | 2023-06-30 A | 2023-07-04 A | 45 | 100% |  |  | Engenharia | 24h | 24h |
| 56 | 1.1.2.2 | **Injetora** |  | 144d | 2023-05-16 A | 2023-12-01 A |  | 100% |  |  |  | 1248h | 1248h |
| 57 | 1.1.2.2.1 | Compra |  | 9d | 2023-05-16 A | 2023-05-26 A |  | 100% |  |  | Compras | 72h | 72h |
| 58 | 1.1.2.2.2 | Construção |  | 85d | 2023-05-29 A | 2023-09-22 A | 57 | 100% |  |  | Haitian | 680h | 680h |
| 59 | 1.1.2.2.3 | Importação |  | 33d | 2023-09-25 A | 2023-11-08 A | 58 | 100% |  |  | Compras | 264h | 264h |
| 60 | 1.1.2.2.4 | Transporte interno |  | 3d | 2023-11-09 A | 2023-11-13 A | 59 | 100% |  |  | Man. de maq. | 24h | 24h |
| 61 | 1.1.2.2.5 | Instalação |  | 6d | 2023-11-14 A | 2023-11-21 A | 60 | 100% |  |  | Man. de maq. | 48h | 48h |
| 62 | 1.1.2.2.6 | Adaptação de manifold |  | 15d | 2023-11-01 A | 2023-11-21 A | 61FF | 100% |  |  | Man. de maq. | 120h | 120h |
| 63 | 1.1.2.2.7 | Aprovação de Injetora | milestone | 0d | 2023-12-01 A | 2023-12-01 A | 147 | 100% |  |  | Man. de maq. |  |  |
| 64 | 1.1.2.2.8 | Orçamento transporte interno |  | 5d | 2023-11-02 A | 2023-11-08 A | 60SF | 100% |  |  | Compras | 40h | 40h |
| 65 | 1.1.2.3 | **Geladeira** |  | 83d | 2023-08-04 A | 2023-11-28 A |  | 100% |  |  |  | 256h | 256h |
| 66 | 1.1.2.3.1 | Compra |  | 5d | 2023-08-04 A | 2023-08-10 A | 55FS+22d | 100% |  |  | Compras | 40h | 40h |
| 67 | 1.1.2.3.2 | Entrega |  | 6d | 2023-08-11 A | 2023-08-18 A | 66 | 100% |  |  | Compras | 48h | 48h |
| 68 | 1.1.2.3.3 | Teste Geladeira durante Try Out "E11" |  | 1d | 2023-08-25 A | 2023-08-25 A | 67, 16SF | 100% |  |  | Engenharia | 8h | 8h |
| 69 | 1.1.2.3.4 | Instalação |  | 5d | 2023-11-22 A | 2023-11-28 A | 67, 61 | 100% |  |  | Man. de maq. | 40h | 40h |
| 70 | 1.1.2.3.5 | Analise de mainfold e flange |  | 15d | 2023-08-11 A | 2023-08-31 A | 66 | 100% |  |  | Man. de maq. | 120h | 120h |
| 71 | 1.1.3 | **Automação** |  | 470d | 2023-05-16 A | 2025-03-17 |  | 99% | 2.85d | 35d |  | 1232h | 1224h |
| 72 | 1.1.3.1 | **Compra** |  | 137d | 2023-05-16 A | 2023-11-22 A |  | 100% |  |  |  | 1008h | 1008h |
| 73 | 1.1.3.1.1 | Informaçoes de automação |  | 1d | 2023-05-16 A | 2023-05-16 A |  | 100% |  |  | Gestão de projetos | 8h | 8h |
| 74 | 1.1.3.1.2 | Orçamentos |  | 5d | 2023-05-17 A | 2023-05-23 A | 73 | 100% |  |  | Engenharia | 40h | 40h |
| 75 | 1.1.3.1.3 | Analise |  | 3d | 2023-05-24 A | 2023-05-26 A | 74 | 100% |  |  | Engenharia | 24h | 24h |
| 76 | 1.1.3.1.4 | Aprovação |  | 5d | 2023-05-29 A | 2023-06-02 A | 75 | 100% |  |  | Engenharia | 40h | 40h |
| 77 | 1.1.3.1.5 | Construção |  | 73d | 2023-06-05 A | 2023-09-13 A | 76 | 100% |  |  | Sepro | 584h | 584h |
| 78 | 1.1.3.1.6 | Importação |  | 22d | 2023-09-14 A | 2023-10-13 A | 77 | 100% |  |  | Compras | 176h | 176h |
| 79 | 1.1.3.1.7 | Transporte interno |  | 1d | 2023-10-16 A | 2023-10-16 A | 78 | 100% |  |  | Man. de maq. | 8h | 8h |
| 80 | 1.1.3.1.8 | Instalação |  | 1d | 2023-11-22 A | 2023-11-22 A | 79, 61 | 100% |  |  | Man. de maq. | 8h | 8h |
| 81 | 1.1.3.1.9 | Analise de transporte interno |  | 15d | 2023-09-25 A | 2023-10-13 A | 79SF | 100% |  |  | Man. de maq. | 120h | 120h |

| ID | WBS | Task | Type | Duration | Start | Finish | Predecessors | Complete | Remaining | Total slack | Free slack | Constraint | Resources | Work | Actual work |
| --- | --- | --- | --- | --- | --- | --- | --- | --- | --- | --- | --- | --- | --- | --- | --- |
| 82 | 1.1.3.2 | **Suporte Automação** |  | 259d | 2024-02-09 A | 2025-02-19 |  | 97% | 6.64d | 53d |  |  |  | 224h | 216h |
| 83 | 1.1.3.2.1 | Orçamento |  | 2d | 2024-02-09 A | 2024-02-12 A |  | 100% |  |  |  | start no earlier than 2024-02-09 | Man. de maq. | 16h | 16h |
| 84 | 1.1.3.2.2 | Construção |  | 24d | 2024-02-13 A | 2024-03-15 A | 83 | 100% |  |  |  |  | Man. de maq. | 192h | 192h |
| 85 | 1.1.3.2.3 | Instalação |  | 1d | 2024-03-18 A | 2024-03-18 A | 84 | 100% |  |  |  |  | Man. de maq. | 8h | 8h |
| 86 | 1.1.3.2.4 | Validação |  | 1d | 2025-02-19 | 2025-02-19 | 85, 39SS |  |  | 27d |  |  | Engenharia | 8h |  |
| 87 | 1.1.3.2.5 | Manutenção robo sepro |  | 11d | 2025-01-10 A | 2025-01-24 A |  | 100% |  |  |  | start no earlier than 2025-01-10 |  |  |  |
| 88 | 1.1.3.3 | Aprovação de AUT | milestone | 0d | 2025-03-17 | 2025-03-17 | 147, 85 |  |  | 35d |  |  | Engenharia |  |  |
| 89 | 1.1.4 | **Produção** |  | 6d | 2025-02-28 A | 2025-03-07 |  | 83% | 1d | 41d |  |  |  | 48h | 40h |
| 90 | 1.1.4.1 | IT |  | 1d | 2025-02-28 | 2025-02-28 | 147SS |  |  | 15d | 0d |  | Engenharia | 8h |  |
| 91 | 1.1.4.2 | Treinamento |  | 5d | 2025-03-03 A | 2025-03-07 A | 90 | 100% |  |  |  |  | Produção | 40h | 40h |
| 92 | 1.1.5 | **Logistica** |  | 29d | 2023-05-16 A | 2023-06-23 A |  | 100% |  |  |  |  |  | 248h | 248h |
| 93 | 1.1.5.1 | Estudo de porta pallet |  | 5d | 2023-06-19 A | 2023-06-23 A | 118 | 100% |  |  |  |  | Logistica | 40h | 40h |
| 94 | 1.1.5.2 | Estudo de leitura de FIFO |  | 14d | 2023-05-16 A | 2023-06-02 A |  | 100% |  |  |  |  | Logistica | 112h | 112h |
| 95 | 1.1.5.3 | Analise de entrega |  | 12d | 2023-05-16 A | 2023-05-31 A |  | 100% |  |  |  |  | Gestão de projetos | 96h | 96h |
| 96 | 1.1.6 | **Processo** |  | 2d | 2025-02-28 | 2025-03-03 |  |  |  | 45d |  |  |  | 32h |  |
| 97 | 1.1.6.1 | CCI |  | 2d | 2025-02-28 | 2025-03-03 | 147SS |  |  | 19d |  |  | Engenharia | 16h |  |
| 98 | 1.1.6.2 | Book de injeção |  | 2d | 2025-02-28 | 2025-03-03 | 147SS |  |  | 19d |  |  | Engenharia | 16h |  |
| 99 | 1.1.7 | **Produto** |  | 505d | 2023-05-16 A | 2025-05-05 |  | 89% | 56.89d | 0d |  |  |  | 5752h | 5104h |
| 100 | 1.1.7.1 | **Desenvolvimento** |  | 500d | 2023-05-16 A | 2025-04-28 |  | 73% | 137.31d | 0d |  |  |  | 1544h | 1120h |
| 101 | 1.1.7.1.1 | **Laudo de migração** |  | 500d | 2023-05-16 A | 2025-04-28 |  | 38% | 308.14d | 0d |  |  |  | 688h | 264h |
| 102 | 1.1.7.1.1.1 | Informação dos meios de ensaios |  | 19d | 2023-05-16 A | 2023-06-09 A |  | 100% |  |  |  |  | Gestão de projetos | 152h | 152h |
| 103 | 1.1.7.1.1.2 | Orçamento |  | 10d | 2024-01-10 A | 2024-01-23 A | 102, 113, 114 | 100% |  |  |  |  | Desenvolvimento | 80h | 80h |
| 104 | 1.1.7.1.1.3 | Envio de amostras |  | 4d | 2025-02-07 A | 2025-02-12 A | 35 | 100% |  |  |  |  | Desenvolvimento | 32h | 32h |
| 105 | 1.1.7.1.1.4 | Laudo |  | 53d | 2025-02-13 | 2025-04-28 | 104 |  |  | 0d |  |  | Sonoco | 424h |  |

Notes:
- 84: Atraso na entrega. De 23/02 para 29/02.
- 87: Sensor de freio do robô queimou a resistencia, causando alarme do Robô. Não é possivel operar.

| ID | WBS | Task | Duration | Start | Finish | Predecessors | Complete | Remaining | Total slack | Constraint | Resources | Work | Actual work |
| --- | --- | --- | --- | --- | --- | --- | --- | --- | --- | --- | --- | --- | --- |
| 106 | 1.1.7.1.2 | **Desenho (Ponto de injeção)** | 29d | 2023-06-21 A | 2023-07-31 A |  | 100% |  |  |  |  | 256h | 256h |
| 107 | 1.1.7.1.2.1 | Mapear produto do concorrente | 10d | 2023-06-21 A | 2023-07-04 A | 108FF | 100% |  |  |  | Desenvolvimento | 80h | 80h |
| 108 | 1.1.7.1.2.2 | Adição no desenho | 14d | 2023-06-30 A | 2023-07-19 A | 45 | 100% |  |  |  | Desenvolvimento | 112h | 112h |
| 109 | 1.1.7.1.2.3 | Aprovação | 8d | 2023-07-20 A | 2023-07-31 A | 108 | 100% |  |  |  | Sonoco | 64h | 64h |
| 110 | 1.1.7.1.3 | **Insumo** | 209d | 2023-05-16 A | 2024-03-01 A |  | 100% |  |  |  |  | 600h | 600h |
| 111 | 1.1.7.1.3.1 | **Master** | 156d | 2023-06-06 A | 2024-01-09 A |  | 100% |  |  |  |  | 32h | 32h |
| 112 | 1.1.7.1.3.1.1 | Natural - Aprovação do cliente | 1d | 2023-10-27 A | 2023-10-27 A |  | 100% |  |  | start no earlier than 2023-10-27 | Desenvolvimento | 8h | 8h |
| 113 | 1.1.7.1.3.1.2 | Aprovação do cliente Azul | 1d | 2024-01-09 A | 2024-01-09 A |  | 100% |  |  | start no earlier than 2024-01-09 | Desenvolvimento | 8h | 8h |
| 114 | 1.1.7.1.3.1.3 | Aprovação do cliente Dourado | 1d | 2024-01-09 A | 2024-01-09 A |  | 100% |  |  | start no earlier than 2024-01-09 | Desenvolvimento | 8h | 8h |
| 115 | 1.1.7.1.3.1.4 | Analise de contração real x desenho | 1d | 2023-06-06 A | 2023-06-06 A |  | 100% |  |  | start no earlier than 2023-06-06 | JM | 8h | 8h |
| 116 | 1.1.7.1.3.2 | **Acomodação** | 57d | 2023-05-16 A | 2023-08-02 A |  | 100% |  |  |  |  | 408h | 408h |
| 117 | 1.1.7.1.3.2.1 | Orçamento | 1d | 2023-05-16 A | 2023-05-16 A |  | 100% |  |  |  | Desenvolvimento | 8h | 8h |
| 118 | 1.1.7.1.3.2.2 | Aprovação de acomodação (custo) | 23d | 2023-05-17 A | 2023-06-16 A | 117 | 100% |  |  |  | Comercial | 184h | 184h |
| 119 | 1.1.7.1.3.2.3 | Entrega Amostra | 17d | 2023-06-19 A | 2023-07-11 A | 118 | 100% |  |  |  | Desenvolvimento | 136h | 136h |
| 120 | 1.1.7.1.3.2.4 | Planejamento Teste | 2d | 2023-07-20 A | 2023-07-21 A | 119FS+6d | 100% |  |  |  | Desenvolvimento | 16h | 16h |
| 121 | 1.1.7.1.3.2.5 | Teste Transporte - Piloto | 7d | 2023-07-24 A | 2023-08-01 A | 120 | 100% |  |  |  | Logistica | 56h | 56h |
| 122 | 1.1.7.1.3.2.6 | Aprovação | 1d | 2023-08-02 A | 2023-08-02 A | 121 | 100% |  |  |  | Desenvolvimento | 8h | 8h |
| 123 | 1.1.7.1.3.3 | **Dispositivo para colocação de peças** | 20d | 2024-02-05 A | 2024-03-01 A |  | 100% |  |  |  |  | 160h | 160h |
| 124 | 1.1.7.1.3.3.1 | Projeto | 7d | 2024-02-05 A | 2024-02-13 A | 32 | 100% |  |  |  | Automação | 56h | 56h |
| 125 | 1.1.7.1.3.3.2 | Aprovação | 2d | 2024-02-14 A | 2024-02-15 A | 124 | 100% |  |  |  | Engenharia | 16h | 16h |
| 126 | 1.1.7.1.3.3.3 | Entrega Material | 10d | 2024-02-16 A | 2024-02-29 A | 125 | 100% |  |  |  | Compras | 80h | 80h |
| 127 | 1.1.7.1.3.3.4 | Confecção dispositivo | 1d | 2024-03-01 A | 2024-03-01 A | 126 | 100% |  |  |  | Automação | 8h | 8h |
| 128 | 1.1.7.2 | **Garantia da qualidade** | 463d | 2023-05-16 A | 2025-03-06 |  | 96% | 16.59d | 42d |  |  | 2456h | 2368h |
| 129 | 1.1.7.2.1 | Visita tecnica Reckitt | 1d | 2023-11-20 A | 2023-11-20 A | 145SS | 100% |  |  |  | Gestão de projetos | 8h | 8h |
| 130 | 1.1.7.2.2 | Adequação | 205d | 2023-11-21 A | 2024-09-02 A | 129 | 100% |  |  |  | Gestão Integrada | 1640h | 1640h |
| 131 | 1.1.7.2.3 | Auditoria | 1d | 2024-09-03 A | 2024-09-03 A | 130 | 100% |  |  |  | Gestão Integrada | 8h | 8h |

Notes:
- 113: Aprovado Master Unigroup - 2% Nominal
- 114: Aprovado Master Unigroup - 3,5% Nominal
- 129: Atenção aos pontos levantados na ultima auditoria da Sonoco

| ID | WBS | Task | Type | Duration | Start | Finish | Predecessors | Complete | Remaining | Total slack | Free slack | Resources | Work | Actual work |
| --- | --- | --- | --- | --- | --- | --- | --- | --- | --- | --- | --- | --- | --- | --- |
| 132 | 1.1.7.2.4 | **Primeiras amostras** |  | 5d | 2025-02-28 | 2025-03-06 |  |  |  | 42d |  |  | 88h |  |
| 133 | 1.1.7.2.4.1 | Avaliação de dimensional |  | 3d | 2025-02-28 | 2025-03-04 | 147SS |  |  | 18d |  | CQ | 24h |  |
| 134 | 1.1.7.2.4.2 | Validação de padrão de cor |  | 3d | 2025-02-28 | 2025-03-04 | 147SS |  |  | 18d |  | CQ | 24h |  |
| 135 | 1.1.7.2.4.3 | Cp / CPK |  | 5d | 2025-02-28 | 2025-03-06 | 147SS |  |  | 16d |  | CQ | 40h |  |
| 136 | 1.1.7.2.5 | **Gabarito** |  | 59d | 2023-05-16 A | 2023-08-04 A |  | 100% |  |  |  |  | 432h | 432h |
| 137 | 1.1.7.2.5.1 | Orçamento |  | 14d | 2023-05-16 A | 2023-06-02 A |  | 100% |  |  |  | CQ | 112h | 112h |
| 138 | 1.1.7.2.5.2 | Compra |  | 6d | 2023-06-05 A | 2023-06-12 A | 137 | 100% |  |  |  | Compras | 48h | 48h |
| 139 | 1.1.7.2.5.3 | Entrega |  | 22d | 2023-06-13 A | 2023-07-12 A | 138 | 100% |  |  |  | Compras | 176h | 176h |
| 140 | 1.1.7.2.5.4 | Calibração |  | 12d | 2023-07-20 A | 2023-08-04 A | 139FS+5d | 100% |  |  |  | CQ | 96h | 96h |
| 141 | 1.1.7.2.6 | Plano de controle |  | 20d | 2023-08-01 A | 2023-08-28 A | 109 | 100% |  |  |  | CQ | 160h | 160h |
| 142 | 1.1.7.2.7 | Book de defeitos |  | 15d | 2023-09-25 A | 2023-10-13 A | 18 | 100% |  |  |  | CQ | 120h | 120h |
| 143 | 1.1.7.3 | **Validação** |  | 401d | 2023-10-09 A | 2025-05-05 |  | 92% | 31.13d | 0d |  |  | 1752h | 1616h |
| 144 | 1.1.7.3.1 | 1° Validação - 3 amostr. |  | 3d | 2023-10-09 A | 2023-10-11 A | 113, 112, 21 | 100% |  |  |  | Gestão de projetos | 24h | 24h |
| 145 | 1.1.7.3.2 | 2° Validação - 1 cx |  | 120d | 2024-02-05 A | 2024-07-19 A | 144, 32 | 100% |  |  |  | Gestão de projetos | 960h | 960h |
| 146 | 1.1.7.3.3 | Aguardando proximos passos |  | 79d | 2024-09-04 A | 2025-01-06 A | 145, 131 | 100% |  |  |  | Sonoco | 632h | 632h |
| 147 | 1.1.7.3.4 | 3° Validação - 29.000 tampas |  | 12d | 2025-02-28 | 2025-03-17 | 145, 39, 42 |  |  | 30d | 0d | Gestão de projetos | 96h |  |
| 148 | 1.1.7.3.5 | Aprovação Sonoco |  | 5d | 2025-04-29 | 2025-05-05 | 147, 105 |  |  | 0d |  | Sonoco | 40h |  |
| 149 | 1.2 | Start de produção | milestone | 0d | 2025-05-05 | 2025-05-05 | 148, 61, 80 |  |  | 0d |  | Gestão de projetos |  |  |

Notes:
- 145: Caixas entregues na Sonoco 15/02. / Caixas analisadas pelo cliente e time de desenvolvimento na planta de Araras em 16/02. / Amostras aprovadas pelo cliente para envio a Reckitt 16/02. / Retorno da Sonoco no dia 11/03 que as amostras foram entregues para Reckitt. Eles irão nos retornar com a data do teste até 15/03.
